# project-plan

Schedule from MS Project, 2012-03-14 to 2012-06-25, costs in $, A marks actual dates.
Microsoft

## Calendars

- Standard: Mon-Fri 08:00-12:00, 13:00-17:00; Sat-Sun off.

## Resources

| Resource | Rate |
| --- | --- |
| Tri |  |
| Nguyen |  |
| Dev1 | 8 |
| Trung |  |
| Dev2 |  |
| Designer |  |
| Tester |  |
| Dev3 |  |
| Dev |  |
| QC |  |

## Schedule

| ID | WBS | Task | Type | Duration | Start | Finish | Predecessors | Complete | Remaining | Total slack | Free slack | Constraint | Resources | Work | Actual work | Cost | Actual cost |
| --- | --- | --- | --- | --- | --- | --- | --- | --- | --- | --- | --- | --- | --- | --- | --- | --- | --- |
| 1 | 1 | **Recipe** |  | 74d? | 2012-03-14 A | 2012-06-25 |  | 5% | 69.94d? | 0d |  |  |  | 735h | 41.2h | 1,760 | 329.6 |
| 2 | 1.1 | **Milestones** |  | 72d | 2012-03-15 | 2012-06-25 |  |  |  | 0d |  |  |  |  |  |  |  |
| 3 | 1.1.1 | Requirement | milestone | 0d | 2012-03-15 | 2012-03-15 | 6 |  |  | 29d |  | start no earlier than 2012-01-30 |  |  |  |  |  |
| 4 | 1.1.2 | Development | milestone | 0d | 2012-06-25 | 2012-06-25 | 8 |  |  | 0d |  | start no earlier than 2012-02-02 |  |  |  |  |  |
| 5 | 1.2 | **Details** |  | 74d? | 2012-03-14 A | 2012-06-25 |  | 5% | 69.94d? | 0d |  |  |  | 735h | 41.2h | 1,760 | 329.6 |
| 6 | 1.2.1 | **Requirement** |  | 2d? | 2012-03-14 | 2012-03-15 |  |  |  | 9.12d | 0d |  |  |  |  |  |  |
| 7 | 1.2.1.1 | Analyze functionalities |  | 2d? | 2012-03-14 | 2012-03-15 |  |  |  | 3.12d | 0d | start no earlier than 2012-03-14 |  |  |  |  |  |
| 8 | 1.2.2 | **Development** |  | 68d? | 2012-03-22 A | 2012-06-25 |  | 6% | 64.19d? | 0d |  |  |  | 735h | 41.2h | 1,760 | 329.6 |
| 9 | 1.2.2.1 | Design database |  | 0.5d? | 2012-03-22 | 2012-03-22 | 7 |  |  | 24.5d |  | start no earlier than 2012-03-22 | Dev3 | 4h |  |  |  |
| 10 | 1.2.2.2 | Setup environment |  | 1.5d? | 2012-03-22 | 2012-03-23 | 7 |  |  | 5.12d | 0d | start no earlier than 2012-03-22 | Dev1 | 12h |  | 64 |  |
| 11 | 1.2.2.3 | **Phase 1 - iPhone App** |  | 36.5d? | 2012-03-23 A | 2012-05-14 |  | 13% | 31.66d? | 30d |  |  |  | 311h | 41.2h | 1,696 | 329.6 |
| 12 | 1.2.2.3.1 | Login page |  | 1.5d? | 2012-03-23 A | 2012-03-26 | 10 | 50% | 0.75d? | 47d | 0d |  | Dev1 | 12h | 6h | 96 | 48 |
| 13 | 1.2.2.3.2 | Register page |  | 1.5d? | 2012-03-27 A | 2012-03-28 | 12 | 50% | 0.75d? | 46.25d | 0d |  | Dev1 | 12h | 6h | 96 | 48 |
| 14 | 1.2.2.3.3 | Main page |  | 2.5d? | 2012-03-28 A | 2012-03-30 | 13 | 50% | 1.25d? | 42.4d | 0d |  | Dev1 | 20h | 10h | 160 | 80 |
| 15 | 1.2.2.3.4 | Backgound Service(XML,Model,Parser,Request,Services) |  | 5d | 2012-04-02 A | 2012-04-06 | 14 | 48% | 2.6d | 40d | 10d |  | Dev1 | 40h | 19.2h | 320 | 153.6 |
| 16 | 1.2.2.3.5 | Search page |  | 2d | 2012-04-23 | 2012-04-24 | 15 |  |  | 30d | 0d | start no earlier than 2012-04-23 | Dev1 | 16h |  | 128 |  |
| 17 | 1.2.2.3.6 | ToDo page |  | 4d | 2012-04-25 | 2012-04-30 | 16 |  |  | 30d | 0d |  | Dev1 | 32h |  | 256 |  |
| 18 | 1.2.2.3.7 | Follow page |  | 4d | 2012-05-01 | 2012-05-04 | 17 |  |  | 30d | 0d |  | Dev1 | 32h |  | 256 |  |
| 19 | 1.2.2.3.8 | Recipe page |  | 1.5d? | 2012-05-07 | 2012-05-08 | 18 |  |  | 30d | 0d |  | Dev1 | 12h |  | 96 |  |
| 20 | 1.2.2.3.9 | Ingredient page |  | 1d? | 2012-05-08 | 2012-05-09 | 19 |  |  | 30d | 0d |  | Dev1 | 8h |  | 64 |  |
| 21 | 1.2.2.3.10 | Step page |  | 1d? | 2012-05-09 | 2012-05-10 | 20 |  |  | 30d | 0d |  | Dev1 | 8h |  | 64 |  |
| 22 | 1.2.2.3.11 | Direction page |  | 2.5d? | 2012-05-10 | 2012-05-14 | 21 |  |  | 30d |  |  | Dev1 | 20h |  | 160 |  |
| 23 | 1.2.2.3.12 | My Recipe page |  | 1.5d? | 2012-04-30 | 2012-05-02 | 36 |  |  | 27.62d | 0d |  | Dev2 | 12h |  |  |  |
| 24 | 1.2.2.3.13 | Add Recipe page |  | 1.5d? | 2012-05-02 | 2012-05-03 | 23 |  |  | 27.62d | 0d |  | Dev2 | 12h |  |  |  |
| 25 | 1.2.2.3.14 | Recipe Ingredient List |  | 1.75d? | 2012-05-03 | 2012-05-07 | 24 |  |  | 27.62d | 0d |  | Dev2 | 14h |  |  |  |
| 26 | 1.2.2.3.15 | Add Ingredient Page |  | 1.75d? | 2012-05-07 | 2012-05-09 | 25 |  |  | 27.62d | 0d |  | Dev2 | 14h |  |  |  |

| ID | WBS | Task | Duration | Start | Finish | Predecessors | Total slack | Free slack | Constraint | Resources | Work |
| --- | --- | --- | --- | --- | --- | --- | --- | --- | --- | --- | --- |
| 27 | 1.2.2.3.16 | **XML Services** | 5.88d? | 2012-04-23 | 2012-04-30 |  | 27.62d |  |  |  | 47h |
| 28 | 1.2.2.3.16.1 | Login service | 0.25d? | 2012-04-23 | 2012-04-23 | 10 | 27.62d | 0d | start no earlier than 2012-04-23 | Dev2 | 2h |
| 29 | 1.2.2.3.16.2 | Register service | 0.38d? | 2012-04-23 | 2012-04-23 | 28 | 27.62d | 0d |  | Dev2 | 3h |
| 30 | 1.2.2.3.16.3 | Recipe service | 0.75d? | 2012-04-23 | 2012-04-24 | 29 | 27.62d | 0d |  | Dev2 | 6h |
| 31 | 1.2.2.3.16.4 | Ingredient/Step service | 0.75d? | 2012-04-24 | 2012-04-25 | 30 | 27.62d | 0d |  | Dev2 | 6h |
| 32 | 1.2.2.3.16.5 | Upload service | 0.75d? | 2012-04-25 | 2012-04-25 | 31 | 27.62d | 0d |  | Dev2 | 6h |
| 33 | 1.2.2.3.16.6 | Saving ingredient/step from user | 0.38d? | 2012-04-25 | 2012-04-26 | 32 | 27.62d | 0d |  | Dev2 | 3h |
| 34 | 1.2.2.3.16.7 | Store service | 0.75d? | 2012-04-26 | 2012-04-26 | 33 | 27.62d | 0d |  | Dev2 | 6h |
| 35 | 1.2.2.3.16.8 | Add user recipe | 0.38d? | 2012-04-27 | 2012-04-27 | 34 | 27.62d | 0d |  | Dev2 | 3h |
| 36 | 1.2.2.3.16.9 | Tracking service | 1.5d? | 2012-04-27 | 2012-04-30 | 35 | 27.62d | 0d |  | Dev2 | 12h |
| 37 | 1.2.2.4 | **Phase 2 - Server Side** | 6d? | 2012-05-09 | 2012-05-17 |  | 27.62d |  |  |  | 48h |
| 38 | 1.2.2.4.1 | Manage users | 0.25d? | 2012-05-09 | 2012-05-09 | 26 | 27.62d | 0d |  | Dev2 | 2h |
| 39 | 1.2.2.4.2 | Manage stores | 1.25d? | 2012-05-09 | 2012-05-10 | 38 | 27.62d | 0d |  | Dev2 | 10h |
| 40 | 1.2.2.4.3 | Manage recipe | 1.25d? | 2012-05-10 | 2012-05-14 | 39 | 27.62d | 0d |  | Dev2 | 10h |
| 41 | 1.2.2.4.4 | Manage ingredient | 1.25d? | 2012-05-14 | 2012-05-15 | 40 | 27.62d | 0d |  | Dev2 | 10h |
| 42 | 1.2.2.4.5 | CMS | 2d? | 2012-05-15 | 2012-05-17 | 41 | 27.62d |  |  | Dev2 | 16h |
| 43 | 1.2.2.5 | Testing Phase1 | 19d | 2012-05-07 | 2012-05-31 |  | 17d |  | start no earlier than 2012-05-07 | QC | 152h |
| 44 | 1.2.2.6 | Testing Phase2 | 26d | 2012-05-21 | 2012-06-25 |  | 0d |  | start no earlier than 2012-05-21 | QC | 208h |
